# Cronograma Portal

Schedule from MS Project, 2009-03-31 to 2010-05-19.
ABB Tecnologia

## Calendars

- Standard: Mon-Fri 08:00-12:00, 13:00-17:00; Sat-Sun off.

## Resources

| Resource |
| --- |
| Alexandre |
| Darcio |
| WebDesigner |
| Analista de Sistemas 1 |
| Analista Programador 1 |
| Analista Programador 2 |
| Gerente |
| Mastersaf |

## Schedule

| ID | WBS | Task | Duration | Start | Finish | Predecessors | Total slack | Resources | Work |
| --- | --- | --- | --- | --- | --- | --- | --- | --- | --- |
| 1 | 1 | **Portal de Solucoes Mastersaf** | 297d | 2009-03-31 | 2010-05-19 |  | 0d | Gerente [15%] | 3489.62h |
| 2 | 1.1 | **Iniciacao** | 4d | 2009-03-31 | 2009-04-03 |  | 0d |  | 30.2h |
| 3 | 1.1.1 | Termo de Abertura de Projeto | 1d | 2009-03-31 | 2009-03-31 |  | 0d | Alexandre [80%]; Darcio [20%] | 8h |
| 4 | 1.1.2 | Plano de Projeto | 3d | 2009-04-01 | 2009-04-03 | 3 | 0d | Alexandre [80%]; Darcio [20%] | 22.2h |
| 5 | 1.2 | **Planejamento** | 54d | 2009-04-06 | 2009-06-18 | 2 | 0d |  | 463.8h |
| 6 | 1.2.1 | Declaracao de Escopo | 5d | 2009-04-06 | 2009-04-10 | 4 | 0d | Alexandre [80%]; Darcio [20%] | 40h |
| 7 | 1.2.2 | Cronograma Revisado | 1d | 2009-04-13 | 2009-04-13 | 6 | 0d | Alexandre | 8h |
| 8 | 1.2.3 | Criterios de Aceite | 2d | 2009-04-14 | 2009-04-15 | 7 | 0d | Alexandre [80%]; Darcio [20%] | 16h |
| 9 | 1.2.4 | Matriz de Responsabilidades | 2d | 2009-04-16 | 2009-04-17 | 8 | 0d | Alexandre [80%]; Darcio [20%] | 15.8h |
| 10 | 1.2.5 | Detalhamento de Requisitos não Funcionais (em conjunto com stakeholders) | 8d | 2009-04-20 | 2009-04-29 | 9 | 0d | Alexandre [50%]; Darcio [50%] | 40h |
| 11 | 1.2.6 | Arquitetura Base | 8d | 2009-04-30 | 2009-05-11 | 10 | 0d | Alexandre | 64h |
| 12 | 1.2.9 | POC Framework MVC (Struts X JSF X Spring Web) | 5d | 2009-05-12 | 2009-05-18 | 11 | 0d | Alexandre | 40h |
| 13 | 1.2.10 | POC Mecanismo de Integração (jBPM X Solução Proprietária) | 12.5d | 2009-05-19 | 2009-06-04 | 12 | 0d | Alexandre | 100h |
| 14 | 1.2.11 | POC Segurança (Spring Security X JAAS) | 7.5d | 2009-06-04 | 2009-06-15 | 13 | 0d | Alexandre | 60h |
| 15 | 1.2.7 | Prototipo | 10d | 2009-05-12 | 2009-05-25 | 11 | 15d | WebDesigner | 80h |
| 16 | 1.2.8 | Aceite Formal da Fase | 3d | 2009-06-16 | 2009-06-18 | 15, 14 | 0d |  |  |
| 17 | 1.3 | **Execucao e Controle** | 239d | 2009-06-19 | 2010-05-19 | 5 | 0d |  | 2624h |
| 18 | 1.3.1 | Modelo de Dominio | 12d | 2009-06-19 | 2009-07-06 | 16 | 0d | Alexandre [80%]; Darcio [20%] | 96h |
| 19 | 1.3.2 | Modelo Entidade Relacionamento | 12d | 2009-07-07 | 2009-07-22 | 18 | 0d | Alexandre | 96h |
| 20 | 1.3.3 | **Infraestrutura** | 131d | 2009-07-23 | 2010-01-21 | 19 | 0d |  | 1568h |
| 21 | 1.3.3.1 | **Billing** | 40d | 2009-07-23 | 2009-09-16 |  | 0d |  | 488h |
| 22 | 1.3.3.1.1 | Verificar e Validar o Escopo | 1d | 2009-07-23 | 2009-07-23 | 19 | 0d | Analista de Sistemas 1 | 8h |
| 23 | 1.3.3.1.2 | Definicao de Casos de Uso | 5d | 2009-07-24 | 2009-07-30 | 22 | 0d | Analista de Sistemas 1 | 40h |
| 24 | 1.3.3.1.5 | Plano de Testes | 5d | 2009-07-31 | 2009-08-06 | 23 | 0d | Analista de Sistemas 1 | 40h |
| 25 | 1.3.3.1.6 | Validação Plano de Testes | 1d | 2009-08-07 | 2009-08-07 | 24 | 0d |  |  |

| ID | WBS | Task | Duration | Start | Finish | Predecessors | Total slack | Resources | Work |
| --- | --- | --- | --- | --- | --- | --- | --- | --- | --- |
| 26 | 1.3.3.1.3 | **Desenvolvimento** | 25d | 2009-08-10 | 2009-09-11 | 25 | 0d |  | 400h |
| 27 | 1.3.3.1.3.1 | Bilhetagem Real Time | 8d | 2009-08-10 | 2009-08-19 | 22 | 0d | Analista Programador 1; Analista Programador 2 | 128h |
| 28 | 1.3.3.1.3.2 | Plano de Tarifas | 8d | 2009-08-20 | 2009-08-31 | 27 | 0d | Analista Programador 1; Analista Programador 2 | 128h |
| 29 | 1.3.3.1.3.3 | Interface de Integracao | 4d | 2009-09-01 | 2009-09-04 | 28 | 0d | Analista Programador 1; Analista Programador 2 | 64h |
| 30 | 1.3.3.1.3.4 | Relatorios | 5d | 2009-09-07 | 2009-09-11 | 29 | 0d | Analista Programador 1; Analista Programador 2 | 80h |
| 31 | 1.3.3.1.4 | Aceite Formal da Iteracao | 3d | 2009-09-14 | 2009-09-16 | 30 | 0d |  |  |
| 32 | 1.3.3.2 | **Usuarios** | 23d | 2009-09-17 | 2009-10-19 | 26 | 0d |  | 264h |
| 33 | 1.3.3.2.1 | Verificar e Validar o Escopo | 1d | 2009-09-17 | 2009-09-17 | 31 | 0d | Analista de Sistemas 1 | 8h |
| 34 | 1.3.3.2.2 | Definicao de Casos de Uso | 2d | 2009-09-18 | 2009-09-21 | 33 | 0d | Analista de Sistemas 1 | 16h |
| 35 | 1.3.3.2.5 | Plano de Testes | 2d | 2009-09-22 | 2009-09-23 | 34 | 0d | Analista de Sistemas 1 | 16h |
| 36 | 1.3.3.2.6 | Validação Plano de Testes | 1d | 2009-09-24 | 2009-09-24 | 35 | 0d |  |  |
| 37 | 1.3.3.2.3 | **Desenvolvimento** | 14d | 2009-09-25 | 2009-10-14 | 36 | 0d |  | 224h |
| 38 | 1.3.3.2.3.1 | Manutencao (CRUD) Roles | 3d | 2009-09-25 | 2009-09-29 | 33 | 0d | Analista Programador 1; Analista Programador 2 | 48h |
| 39 | 1.3.3.2.3.2 | Manutencao (CRUD) Grupos | 3d | 2009-09-30 | 2009-10-02 | 38 | 0d | Analista Programador 1; Analista Programador 2 | 48h |
| 40 | 1.3.3.2.3.3 | Manutencao (CRUD) Usuarios | 3d | 2009-10-05 | 2009-10-07 | 39 | 0d | Analista Programador 1; Analista Programador 2 | 48h |
| 41 | 1.3.3.2.3.4 | Relatorios | 5d | 2009-10-08 | 2009-10-14 | 40 | 0d | Analista Programador 1; Analista Programador 2 | 80h |
| 42 | 1.3.3.2.4 | Aceite Formal da Iteracao | 3d | 2009-10-15 | 2009-10-19 | 41 | 0d |  |  |
| 43 | 1.3.3.3 | **Gerenciamento de Conteudo** | 40d | 2009-10-20 | 2009-12-14 | 32 | 0d |  | 488h |
| 44 | 1.3.3.3.1 | Verificar e Validar o Escopo | 1d | 2009-10-20 | 2009-10-20 | 42 | 0d | Analista de Sistemas 1 | 8h |
| 45 | 1.3.3.3.2 | Definicao de Casos de Uso | 5d | 2009-10-21 | 2009-10-27 | 44 | 0d | Analista de Sistemas 1 | 40h |
| 46 | 1.3.3.3.5 | Plano de Testes | 5d | 2009-10-28 | 2009-11-03 | 45 | 0d | Analista de Sistemas 1 | 40h |
| 47 | 1.3.3.3.6 | Validação Plano de Testes | 1d | 2009-11-04 | 2009-11-04 | 46 | 0d |  |  |
| 48 | 1.3.3.3.3 | **Desenvolvimento** | 25d | 2009-11-05 | 2009-12-09 | 47 | 0d |  | 400h |
| 49 | 1.3.3.3.3.1 | Manutencao Ger. de Conteudo | 20d | 2009-11-05 | 2009-12-02 | 44 | 0d | Analista Programador 1; Analista Programador 2 | 320h |
| 50 | 1.3.3.3.3.2 | Relatorios | 5d | 2009-12-03 | 2009-12-09 | 49 | 0d | Analista Programador 1; Analista Programador 2 | 80h |
| 51 | 1.3.3.3.4 | Aceite Formal da Iteracao | 3d | 2009-12-10 | 2009-12-14 | 50 | 0d |  |  |

| ID | WBS | Task | Duration | Start | Finish | Predecessors | Total slack | Resources | Work |
| --- | --- | --- | --- | --- | --- | --- | --- | --- | --- |
| 52 | 1.3.3.4 | **Monitoramento das Aplicacoes** | 28d | 2009-12-15 | 2010-01-21 | 43 | 0d |  | 328h |
| 53 | 1.3.3.4.1 | Verificar e Validar o Escopo | 1d | 2009-12-15 | 2009-12-15 | 48 | 0d | Analista de Sistemas 1 | 8h |
| 54 | 1.3.3.4.2 | Definicao de Casos de Uso | 3d | 2009-12-16 | 2009-12-18 | 53 | 0d | Analista de Sistemas 1 | 24h |
| 55 | 1.3.3.4.5 | Plano de Testes | 3d | 2009-12-21 | 2009-12-23 | 54 | 0d | Analista de Sistemas 1 | 24h |
| 56 | 1.3.3.4.6 | Validação Plano de Testes | 1d | 2009-12-24 | 2009-12-24 | 55 | 0d |  |  |
| 57 | 1.3.3.4.3 | **Desenvolvimento** | 17d | 2009-12-25 | 2010-01-18 | 56 | 0d |  | 272h |
| 58 | 1.3.3.4.3.1 | Monitoramento de Aplicações | 12d | 2009-12-25 | 2010-01-11 | 53 | 0d | Analista Programador 1; Analista Programador 2 | 192h |
| 59 | 1.3.3.4.3.2 | Relatorios | 5d | 2010-01-12 | 2010-01-18 | 58 | 0d | Analista Programador 1; Analista Programador 2 | 80h |
| 60 | 1.3.3.4.4 | Aceite Formal da Iteracao | 3d | 2010-01-19 | 2010-01-21 | 59 | 0d |  |  |
| 61 | 1.3.4 | **Integrações** | 84d | 2010-01-22 | 2010-05-19 | 20 | 0d |  | 864h |
| 62 | 1.3.4.1 | **Integracao NFE** | 21d | 2010-01-22 | 2010-02-19 | 52 | 0d |  | 216h |
| 63 | 1.3.4.1.1 | Verificar e Validar o Escopo | 1d | 2010-01-22 | 2010-01-22 | 60 | 0d | Analista de Sistemas 1 | 8h |
| 64 | 1.3.4.1.2 | Definicao de Casos de Uso | 3d | 2010-01-25 | 2010-01-27 | 63 | 0d | Analista de Sistemas 1 | 24h |
| 65 | 1.3.4.1.5 | Plano de Testes | 3d | 2010-01-28 | 2010-02-01 | 64 | 0d | Analista de Sistemas 1 | 24h |
| 66 | 1.3.4.1.6 | Validação Plano de Testes | 1d | 2010-02-02 | 2010-02-02 | 65 | 0d |  |  |
| 67 | 1.3.4.1.3 | **Desenvolvimento** | 10d | 2010-02-03 | 2010-02-16 | 66 | 0d |  | 160h |
| 68 | 1.3.4.1.3.1 | Integracao | 10d | 2010-02-03 | 2010-02-16 | 63 | 0d | Analista Programador 1; Analista Programador 2 | 160h |
| 69 | 1.3.4.1.4 | Aceite Formal da Iteracao | 3d | 2010-02-17 | 2010-02-19 | 67 | 0d |  |  |
| 70 | 1.3.4.3 | **Integracao Taxrules** | 21d | 2010-02-22 | 2010-03-22 | 62 | 0d |  | 216h |
| 71 | 1.3.4.3.1 | Verificar e Validar o Escopo | 1d | 2010-02-22 | 2010-02-22 |  | 0d | Analista de Sistemas 1 | 8h |
| 72 | 1.3.4.3.2 | Definicao de Casos de Uso | 3d | 2010-02-23 | 2010-02-25 | 71 | 0d | Analista de Sistemas 1 | 24h |
| 73 | 1.3.4.3.5 | Plano de Testes | 3d | 2010-02-26 | 2010-03-02 | 72 | 0d | Analista de Sistemas 1 | 24h |
| 74 | 1.3.4.3.6 | Validação Plano de Testes | 1d | 2010-03-03 | 2010-03-03 | 73 | 0d |  |  |
| 75 | 1.3.4.3.3 | **Desenvolvimento** | 10d | 2010-03-04 | 2010-03-17 | 74 | 0d |  | 160h |
| 76 | 1.3.4.3.3.1 | Integracao | 10d | 2010-03-04 | 2010-03-17 | 71 | 0d | Analista Programador 1; Analista Programador 2 | 160h |
| 77 | 1.3.4.3.4 | Aceite Formal da Iteracao | 3d | 2010-03-18 | 2010-03-22 | 75 | 0d |  |  |

| ID | WBS | Task | Duration | Start | Finish | Predecessors | Total slack | Resources | Work |
| --- | --- | --- | --- | --- | --- | --- | --- | --- | --- |
| 78 | 1.3.4.4 | **Integracao Validador** | 21d | 2010-03-23 | 2010-04-20 | 70 | 0d |  | 216h |
| 79 | 1.3.4.4.1 | Verificar e Validar o Escopo | 1d | 2010-03-23 | 2010-03-23 | 70 | 0d | Analista de Sistemas 1 | 8h |
| 80 | 1.3.4.4.2 | Definicao de Casos de Uso | 3d | 2010-03-24 | 2010-03-26 | 79 | 0d | Analista de Sistemas 1 | 24h |
| 81 | 1.3.4.4.5 | Plano de Testes | 3d | 2010-03-29 | 2010-03-31 | 80 | 0d | Analista de Sistemas 1 | 24h |
| 82 | 1.3.4.4.6 | Validação Plano de Testes | 1d | 2010-04-01 | 2010-04-01 | 81 | 0d |  |  |
| 83 | 1.3.4.4.3 | **Desenvolvimento** | 10d | 2010-04-02 | 2010-04-15 | 82 | 0d |  | 160h |
| 84 | 1.3.4.4.3.1 | Integracao | 10d | 2010-04-02 | 2010-04-15 | 79 | 0d | Analista Programador 1; Analista Programador 2 | 160h |
| 85 | 1.3.4.4.4 | Aceite Formal da Iteracao | 3d | 2010-04-16 | 2010-04-20 | 83 | 0d |  |  |
| 86 | 1.3.4.7 | **Integracao CTE** | 21d | 2010-04-21 | 2010-05-19 | 78 | 0d |  | 216h |
| 87 | 1.3.4.7.1 | Verificar e Validar o Escopo | 1d | 2010-04-21 | 2010-04-21 |  | 0d | Analista de Sistemas 1 | 8h |
| 88 | 1.3.4.7.2 | Definicao de Casos de Uso | 3d | 2010-04-22 | 2010-04-26 | 87 | 0d | Analista de Sistemas 1 | 24h |
| 89 | 1.3.4.7.5 | Plano de Testes | 3d | 2010-04-27 | 2010-04-29 | 88 | 0d | Analista de Sistemas 1 | 24h |
| 90 | 1.3.4.7.6 | Validação Plano de Testes | 1d | 2010-04-30 | 2010-04-30 | 89 | 0d |  |  |
| 91 | 1.3.4.7.3 | **Desenvolvimento** | 10d | 2010-05-03 | 2010-05-14 | 90 | 0d |  | 160h |
| 92 | 1.3.4.7.3.1 | Integracao | 10d | 2010-05-03 | 2010-05-14 | 87 | 0d | Analista Programador 1; Analista Programador 2 | 160h |
| 93 | 1.3.4.7.4 | Aceite Formal da Iteracao | 3d | 2010-05-17 | 2010-05-19 | 92 | 0d |  |  |
| 94 | 1.4 | **Encerramento** | 1d | 2009-03-31 | 2009-03-31 |  | 296d |  | 16h |
| 95 | 1.4.1 | Lições Aprendidas | 1d | 2009-03-31 | 2009-03-31 |  | 296d | Analista Programador 1; Analista Programador 2 | 16h |
